# Global Treps Project Rev 1

How a schedule from MS Project changed from version to version. A marks actual dates.

## Version 1 (saved 2023-02-01, file Global Treps Project Rev 1.mpp)

| ID | WBS | Task | Duration | Start | Finish | Predecessors | Total float |
| --- | --- | --- | --- | --- | --- | --- | --- |
| 1 | 1 | **Initiating** | 10d | 2023-01-25 | 2023-02-07 |  | 0d |
| 2 |  | Finalize project team | 5d | 2023-01-25 | 2023-01-31 |  | 0d |
| 3 |  | Develop project charter | 5d | 2023-02-01 | 2023-02-07 | 2 | 0d |
| 4 | 2 | **Planning** | 28d | 2023-02-08 | 2023-03-17 |  | 0d |
| 5 |  | Develop scope statement | 8d | 2023-02-08 | 2023-02-17 | 3 | 0d |
| 6 |  | Develop and refine other plans | 20d | 2023-02-20 | 2023-03-17 | 5 | 37d |
| 7 | 3 | **Executing** | 237d | 2023-02-20 | 2024-01-16 |  | 0d |
| 8 | 3.1 | **Concept** | 77d | 2023-02-20 | 2023-06-06 |  | 0d |
| 9 |  | Conduct research for income mechanism into Global Treps | 20d | 2023-02-20 | 2023-03-17 | 5 | 224d |
| 10 |  | Evaluate current systems | 5d | 2023-02-20 | 2023-02-24 | 5 | 0d |
| 11 |  | Define requirements | 15d | 2023-02-27 | 2023-03-17 | 5, 10 | 0d |
| 12 |  | Define user requirements | 12d | 2023-03-20 | 2023-04-04 | 11 | 4d |
| 13 |  | Define content requirements | 16d | 2023-03-20 | 2023-04-10 | 11 | 0d |
| 14 |  | Define system requirements | 18d | 2023-04-11 | 2023-05-04 | 13 | 173d |
| 15 |  | Define server owner requirements | 16d | 2023-05-05 | 2023-05-26 | 14 | 173d |
| 16 |  | Define specific functionality | 21d | 2023-04-11 | 2023-05-09 | 12, 13 | 0d |
| 17 |  | Define risks and risk management approach | 13d | 2023-02-27 | 2023-03-15 | 10 | 39d |
| 18 |  | Develop project plan | 19d | 2023-05-10 | 2023-06-05 | 6, 16, 17 | 0d |
| 19 |  | Brief web development team | 1d | 2023-06-06 | 2023-06-06 | 15, 18 | 167d |
| 20 | 3.2 | **Web Site Design** | 19d | 2023-06-06 | 2023-06-30 |  | 0d |
| 21 |  | Create templates and guidelines for running events | 15d | 2023-06-06 | 2023-06-26 | 18 | 149d |
| 22 |  | Design donation portal for potential investors | 19d | 2023-06-06 | 2023-06-30 | 18 | 0d |
| 23 |  | Design a submission page for new ideas on products/services | 13d | 2023-06-06 | 2023-06-22 | 18 | 6d |
| 24 |  | Design registration for organizations to develop custom websites | 12d | 2023-06-06 | 2023-06-21 | 18 | 7d |
| 25 |  | Design tracking system | 9d | 2023-06-06 | 2023-06-16 | 18 | 16d |
| 26 |  | Design incentive system | 15d | 2023-06-06 | 2023-06-26 | 18 | 10d |
| 27 | 3.3 | **Web Site Development** | 68d | 2023-06-19 | 2023-09-20 |  | 10d |
| 28 |  | Develop donation portal for potential investors | 22d | 2023-07-03 | 2023-08-01 | 22 | 0d |
| 29 |  | Develop a submission page for new ideas on products/services | 22d | 2023-06-23 | 2023-07-24 | 23 | 6d |
| 30 |  | Develop a registration page for organizations to develop custom websites | 22d | 2023-06-22 | 2023-07-21 | 24 | 7d |
| 31 |  | Develop tracking system | 16d | 2023-06-19 | 2023-07-10 | 25 | 16d |
| 32 |  | Develop incentive system | 16d | 2023-06-27 | 2023-07-18 | 26 | 10d |
| 33 |  | Upload templates and guidelines | 4d | 2023-06-27 | 2023-06-30 | 21, 23 | 149d |
| 34 |  | Conduct Verification Testing | 18d | 2023-08-02 | 2023-08-25 | 28, 29, 30, 31, 32 | 0d |
| 35 |  | Conduct Validation Testing | 14d | 2023-08-28 | 2023-09-14 | 34 | 0d |
| 36 |  | Conduct Pilot Testing | 4d | 2023-09-15 | 2023-09-20 | 35 | 0d |
| 37 | 3.4 | **Roll Out** | 74d | 2023-09-21 | 2024-01-02 |  | 0d |
| 38 |  | Hold Four Events (in different countries) to Test Site Functionality | 44d | 2023-09-21 | 2023-11-21 | 36 | 0d |
| 39 |  | Obtain Feedback | 3d | 2023-11-22 | 2023-11-24 | 38 | 0d |
| 40 |  | Implement Changes | 12d | 2023-11-27 | 2023-12-12 | 39 | 0d |
| 41 |  | Move site to production server | 4d | 2023-12-13 | 2023-12-18 | 40 | 0d |
| 42 |  | Determine roll out schedule | 6d | 2023-12-19 | 2023-12-26 | 40, 41 | 0d |
| 43 |  | Communicate roll out plan to users | 4d | 2023-12-27 | 2024-01-01 | 42 | 0d |
| 44 |  | Conduct user training | 5d | 2023-09-21 | 2023-09-27 | 36 | 69d |
| 45 |  | Deploy system | 1d | 2024-01-02 | 2024-01-02 | 43 | 0d |
| 46 | 3.5 | **Support** | 10d | 2024-01-03 | 2024-01-16 |  | 0d |
| 47 |  | Determine what support resources are needed | 3d | 2024-01-03 | 2024-01-05 | 44, 45 | 0d |
| 48 |  | Make appropriate staffing changes | 3d | 2024-01-08 | 2024-01-10 | 47 | 3d |
| 49 |  | Determine method that users will attain support | 3d | 2024-01-08 | 2024-01-10 | 47 | 3d |
| 50 |  | Determine support process | 6d | 2024-01-08 | 2024-01-15 | 47 | 0d |
| 51 |  | Launch support | 1d | 2024-01-16 | 2024-01-16 | 48, 49, 50 | 0d |
| 52 | 4 | **Controlling** | 1d | 2024-01-17 | 2024-01-17 |  | 0d |
| 53 |  | Hold formal customer review | 1d | 2024-01-17 | 2024-01-17 | 51 | 0d |
| 54 | 5 | **Closing** | 6d | 2024-01-18 | 2024-01-25 |  | 0d |
| 55 |  | Prepare final report and presentation | 5d | 2024-01-18 | 2024-01-24 | 53 | 0d |
| 56 |  | Deliver final report and presentation | 1d | 2024-01-25 | 2024-01-25 | 55 | 0d |

## Version 2 (saved 2023-02-07, file Global Treps Project Rev 0.mpp)

Last finish 2024-01-25 → 2023-02-06 (-353d).

Added:

| ID | Task | Duration | Start | Finish |
| --- | --- | --- | --- | --- |
| 56 | Deliver final report and presentatio | 1d | 2023-02-06 | 2023-02-06 |

Removed: 56 Deliver final report and presentation

Changed:

| ID | Task | Start | Finish | Duration | Complete | Total float | Predecessors |
| --- | --- | --- | --- | --- | --- | --- | --- |
| 1 | **Initiating** | 2023-01-25 → 2023-02-06 (+12d) | 2023-02-07 → 2023-02-06 (-1d) | 10d → 1d |  |  |  |
| 2 | Finalize project team | 2023-01-25 → 2023-02-06 (+12d) | 2023-01-31 → 2023-02-06 (+6d) | 5d → 1d |  | 0d → none |  |
| 3 | Develop project charter | 2023-02-01 → 2023-02-06 (+5d) | 2023-02-07 → 2023-02-06 (-1d) | 5d → 1d |  | 0d → none | 2 → none |
| 4 | **Planning** | 2023-02-08 → 2023-02-06 (-2d) | 2023-03-17 → 2023-02-06 (-39d) | 28d → 1d |  |  |  |
| 5 | Develop scope statement | 2023-02-08 → 2023-02-06 (-2d) | 2023-02-17 → 2023-02-06 (-11d) | 8d → 1d |  | 0d → none | 3 → none |
| 6 | Develop and refine other plans | 2023-02-20 → 2023-02-06 (-14d) | 2023-03-17 → 2023-02-06 (-39d) | 20d → 1d |  | 37d → none | 5 → none |
| 7 | **Executing** | 2023-02-20 → 2023-02-06 A (-14d) | 2024-01-16 → 2023-02-06 (-344d) | 237d → 1d | 0% → 2% |  |  |
| 8 | **Concept** | 2023-02-20 → 2023-02-06 (-14d) | 2023-06-06 → 2023-02-06 (-120d) | 77d → 1d |  |  |  |
| 9 | Conduct research for income mechanism into Global Treps | 2023-02-20 → 2023-02-06 (-14d) | 2023-03-17 → 2023-02-06 (-39d) | 20d → 1d |  | 224d → none | 5 → none |
| 10 | Evaluate current systems | 2023-02-20 → 2023-02-06 (-14d) | 2023-02-24 → 2023-02-06 (-18d) | 5d → 1d |  | 0d → none | 5 → none |
| 11 | Define requirements | 2023-02-27 → 2023-02-06 (-21d) | 2023-03-17 → 2023-02-06 (-39d) | 15d → 1d |  | 0d → none | 5, 10 → none |
| 12 | Define user requirements | 2023-03-20 → 2023-02-06 (-42d) | 2023-04-04 → 2023-02-06 (-57d) | 12d → 1d |  | 4d → none | 11 → none |
| 13 | Define content requirements | 2023-03-20 → 2023-02-06 (-42d) | 2023-04-10 → 2023-02-06 (-63d) | 16d → 1d |  | 0d → none | 11 → none |
| 14 | Define system requirements | 2023-04-11 → 2023-02-06 (-64d) | 2023-05-04 → 2023-02-06 (-87d) | 18d → 1d |  | 173d → none | 13 → none |
| 15 | Define server owner requirements | 2023-05-05 → 2023-02-06 (-88d) | 2023-05-26 → 2023-02-06 (-109d) | 16d → 1d |  | 173d → none | 14 → none |
| 16 | Define specific functionality | 2023-04-11 → 2023-02-06 (-64d) | 2023-05-09 → 2023-02-06 (-92d) | 21d → 1d |  | 0d → none | 12, 13 → none |
| 17 | Define risks and risk management approach | 2023-02-27 → 2023-02-06 (-21d) | 2023-03-15 → 2023-02-06 (-37d) | 13d → 1d |  | 39d → none | 10 → none |
| 18 | Develop project plan | 2023-05-10 → 2023-02-06 (-93d) | 2023-06-05 → 2023-02-06 (-119d) | 19d → 1d |  | 0d → none | 6, 16, 17 → none |
| 19 | Brief web development team | 2023-06-06 → 2023-02-06 (-120d) | 2023-06-06 → 2023-02-06 (-120d) |  |  | 167d → none | 15, 18 → none |
| 20 | **Web Site Design** | 2023-06-06 → 2023-02-06 (-120d) | 2023-06-30 → 2023-02-06 (-144d) | 19d → 1d |  |  |  |
| 21 | Create templates and guidelines for running events | 2023-06-06 → 2023-02-06 (-120d) | 2023-06-26 → 2023-02-06 (-140d) | 15d → 1d |  | 149d → none | 18 → none |
| 22 | Design donation portal for potential investors | 2023-06-06 → 2023-02-06 (-120d) | 2023-06-30 → 2023-02-06 (-144d) | 19d → 1d |  | 0d → none | 18 → none |
| 23 | Design a submission page for new ideas on products/services | 2023-06-06 → 2023-02-06 (-120d) | 2023-06-22 → 2023-02-06 (-136d) | 13d → 1d |  | 6d → none | 18 → none |
| 24 | Design registration for organizations to develop custom websites | 2023-06-06 → 2023-02-06 (-120d) | 2023-06-21 → 2023-02-06 (-135d) | 12d → 1d |  | 7d → none | 18 → none |
| 25 | Design tracking system | 2023-06-06 → 2023-02-06 (-120d) | 2023-06-16 → 2023-02-06 (-130d) | 9d → 1d |  | 16d → none | 18 → none |
| 26 | Design incentive system | 2023-06-06 → 2023-02-06 (-120d) | 2023-06-26 → 2023-02-06 (-140d) | 15d → 1d |  | 10d → none | 18 → none |
| 27 | **Web Site Development** | 2023-06-19 → 2023-02-06 (-133d) | 2023-09-20 → 2023-02-06 (-226d) | 68d → 1d |  | 10d → 0d |  |
| 28 | Develop donation portal for potential investors | 2023-07-03 → 2023-02-06 (-147d) | 2023-08-01 → 2023-02-06 (-176d) | 22d → 1d |  | 0d → none | 22 → none |
| 29 | Develop a submission page for new ideas on products/services | 2023-06-23 → 2023-02-06 (-137d) | 2023-07-24 → 2023-02-06 (-168d) | 22d → 1d |  | 6d → none | 23 → none |
| 30 | Develop a registration page for organizations to develop custom websites | 2023-06-22 → 2023-02-06 (-136d) | 2023-07-21 → 2023-02-06 (-165d) | 22d → 1d |  | 7d → none | 24 → none |
| 31 | Develop tracking system | 2023-06-19 → 2023-02-06 (-133d) | 2023-07-10 → 2023-02-06 (-154d) | 16d → 1d |  | 16d → none | 25 → none |
| 32 | Develop incentive system | 2023-06-27 → 2023-02-06 (-141d) | 2023-07-18 → 2023-02-06 (-162d) | 16d → 1d |  | 10d → none | 26 → none |
| 33 | Upload templates and guidelines | 2023-06-27 → 2023-02-06 (-141d) | 2023-06-30 → 2023-02-06 (-144d) | 4d → 1d |  | 149d → none | 21, 23 → none |
| 34 | Conduct Verification Testing | 2023-08-02 → 2023-02-06 (-177d) | 2023-08-25 → 2023-02-06 (-200d) | 18d → 1d |  | 0d → none | 28, 29, 30, 31, 32 → none |
| 35 | Conduct Validation Testing | 2023-08-28 → 2023-02-06 (-203d) | 2023-09-14 → 2023-02-06 (-220d) | 14d → 1d |  | 0d → none | 34 → none |
| 36 | Conduct Pilot Testing | 2023-09-15 → 2023-02-06 (-221d) | 2023-09-20 → 2023-02-06 (-226d) | 4d → 1d |  | 0d → none | 35 → none |
| 37 | **Roll Out** | 2023-09-21 → 2023-02-06 (-227d) | 2024-01-02 → 2023-02-06 (-330d) | 74d → 1d |  |  |  |
| 38 | Hold Four Events (in different countries) to Test Site Functionality | 2023-09-21 → 2023-02-06 (-227d) | 2023-11-21 → 2023-02-06 (-288d) | 44d → 1d |  | 0d → none | 36 → none |
| 39 | Obtain Feedback | 2023-11-22 → 2023-02-06 (-289d) | 2023-11-24 → 2023-02-06 (-291d) | 3d → 1d |  | 0d → none | 38 → none |
| 40 | Implement Changes | 2023-11-27 → 2023-02-06 (-294d) | 2023-12-12 → 2023-02-06 (-309d) | 12d → 1d |  | 0d → none | 39 → none |
| 41 | Move site to production server | 2023-12-13 → 2023-02-06 (-310d) | 2023-12-18 → 2023-02-06 (-315d) | 4d → 1d |  | 0d → none | 40 → none |
| 42 | Determine roll out schedule | 2023-12-19 → 2023-02-06 (-316d) | 2023-12-26 → 2023-02-06 (-323d) | 6d → 1d |  | 0d → none | 40, 41 → none |
| 43 | Communicate roll out plan to users | 2023-12-27 → 2023-02-06 (-324d) | 2024-01-01 → 2023-02-06 (-329d) | 4d → 1d |  | 0d → none | 42 → none |
| 44 | Conduct user training | 2023-09-21 → 2023-02-06 (-227d) | 2023-09-27 → 2023-02-06 (-233d) | 5d → 1d |  | 69d → none | 36 → none |
| 45 | Deploy system | 2024-01-02 → 2023-02-06 (-330d) | 2024-01-02 → 2023-02-06 (-330d) |  |  | 0d → none | 43 → none |
| 46 | **Support** | 2024-01-03 → 2023-02-06 A (-331d) | 2024-01-16 → 2023-02-06 (-344d) | 10d → 1d | 0% → 15% | 0d → none |  |
| 47 | Determine what support resources are needed | 2024-01-03 → 2023-02-06 A (-331d) | 2024-01-05 → 2023-02-06 (-333d) | 3d → 1d | 0% → 25% | 0d → none | 44, 45 → none |
| 48 | Make appropriate staffing changes | 2024-01-08 → 2023-02-06 (-336d) | 2024-01-10 → 2023-02-06 (-338d) | 3d → 1d |  | 3d → none | 47 → none |
| 49 | Determine method that users will attain support | 2024-01-08 → 2023-02-06 A (-336d) | 2024-01-10 → 2023-02-06 (-338d) | 3d → 1d | 0% → 25% | 3d → none | 47 → none |
| 50 | Determine support process | 2024-01-08 → 2023-02-06 A (-336d) | 2024-01-15 → 2023-02-06 (-343d) | 6d → 1d | 0% → 25% | 0d → none | 47 → none |
| 51 | Launch support | 2024-01-16 → 2023-02-06 (-344d) | 2024-01-16 → 2023-02-06 (-344d) |  |  | 0d → none | 48, 49, 50 → none |
| 52 | **Controlling** | 2024-01-17 → 2023-02-06 A (-345d) | 2024-01-17 → 2023-02-06 (-345d) |  | 0% → 25% |  |  |
| 53 | Hold formal customer review | 2024-01-17 → 2023-02-06 A (-345d) | 2024-01-17 → 2023-02-06 (-345d) |  | 0% → 25% | 0d → none | 51 → none |
| 54 | **Closing** | 2024-01-18 → 2023-02-06 (-346d) | 2024-01-25 → 2023-02-06 (-353d) | 6d → 1d |  |  |  |
| 55 | Prepare final report and presentation | 2024-01-18 → 2023-02-06 (-346d) | 2024-01-24 → 2023-02-06 (-352d) | 5d → 1d |  | 0d → none | 53 → none |

## Version 3 (saved 2023-03-20, file Global Treps Project Rev 2.mpp)

Last finish 2023-02-06 → 2024-01-25 (+353d).

Added:

| ID | Task | Duration | Start | Finish | Predecessors |
| --- | --- | --- | --- | --- | --- |
| 56 | Deliver final report and presentation | 1d | 2024-01-25 | 2024-01-25 | 55 |

Removed: 56 Deliver final report and presentatio

Changed:

| ID | Task | Start | Finish | Duration | Complete | Total float | Predecessors |
| --- | --- | --- | --- | --- | --- | --- | --- |
| 1 | **Initiating** | 2023-02-06 → 2023-01-25 (-12d) | 2023-02-06 → 2023-02-07 (+1d) | 1d → 10d |  |  |  |
| 2 | Finalize project team | 2023-02-06 → 2023-01-25 (-12d) | 2023-02-06 → 2023-01-31 (-6d) | 1d → 5d |  | none → 0d |  |
| 3 | Develop project charter | 2023-02-06 → 2023-02-01 (-5d) | 2023-02-06 → 2023-02-07 (+1d) | 1d → 5d |  | none → 0d | none → 2 |
| 4 | **Planning** | 2023-02-06 → 2023-02-08 (+2d) | 2023-02-06 → 2023-03-17 (+39d) | 1d → 28d |  |  |  |
| 5 | Develop scope statement | 2023-02-06 → 2023-02-08 (+2d) | 2023-02-06 → 2023-02-17 (+11d) | 1d → 8d |  | none → 0d | none → 3 |
| 6 | Develop and refine other plans | 2023-02-06 → 2023-02-20 (+14d) | 2023-02-06 → 2023-03-17 (+39d) | 1d → 20d |  | none → 37d | none → 5 |
| 7 | **Executing** | 2023-02-06 A → 2023-02-20 (+14d) | 2023-02-06 → 2024-01-16 (+344d) | 1d → 237d | 2% → 0% |  |  |
| 8 | **Concept** | 2023-02-06 → 2023-02-20 (+14d) | 2023-02-06 → 2023-06-06 (+120d) | 1d → 77d |  |  |  |
| 9 | Conduct research for income mechanism into Global Treps | 2023-02-06 → 2023-02-20 (+14d) | 2023-02-06 → 2023-03-17 (+39d) | 1d → 20d |  | none → 224d | none → 5 |
| 10 | Evaluate current systems | 2023-02-06 → 2023-02-20 (+14d) | 2023-02-06 → 2023-02-24 (+18d) | 1d → 5d |  | none → 0d | none → 5 |
| 11 | Define requirements | 2023-02-06 → 2023-02-27 (+21d) | 2023-02-06 → 2023-03-17 (+39d) | 1d → 15d |  | none → 0d | none → 5, 10 |
| 12 | Define user requirements | 2023-02-06 → 2023-03-20 (+42d) | 2023-02-06 → 2023-04-04 (+57d) | 1d → 12d |  | none → 4d | none → 11 |
| 13 | Define content requirements | 2023-02-06 → 2023-03-20 (+42d) | 2023-02-06 → 2023-04-10 (+63d) | 1d → 16d |  | none → 0d | none → 11 |
| 14 | Define system requirements | 2023-02-06 → 2023-04-11 (+64d) | 2023-02-06 → 2023-05-04 (+87d) | 1d → 18d |  | none → 173d | none → 13 |
| 15 | Define server owner requirements | 2023-02-06 → 2023-05-05 (+88d) | 2023-02-06 → 2023-05-26 (+109d) | 1d → 16d |  | none → 173d | none → 14 |
| 16 | Define specific functionality | 2023-02-06 → 2023-04-11 (+64d) | 2023-02-06 → 2023-05-09 (+92d) | 1d → 21d |  | none → 0d | none → 12, 13 |
| 17 | Define risks and risk management approach | 2023-02-06 → 2023-02-27 (+21d) | 2023-02-06 → 2023-03-15 (+37d) | 1d → 13d |  | none → 39d | none → 10 |
| 18 | Develop project plan | 2023-02-06 → 2023-05-10 (+93d) | 2023-02-06 → 2023-06-05 (+119d) | 1d → 19d |  | none → 0d | none → 6, 16, 17 |
| 19 | Brief web development team | 2023-02-06 → 2023-06-06 (+120d) | 2023-02-06 → 2023-06-06 (+120d) |  |  | none → 167d | none → 15, 18 |
| 20 | **Web Site Design** | 2023-02-06 → 2023-06-06 (+120d) | 2023-02-06 → 2023-06-30 (+144d) | 1d → 19d |  |  |  |
| 21 | Create templates and guidelines for running events | 2023-02-06 → 2023-06-06 (+120d) | 2023-02-06 → 2023-06-26 (+140d) | 1d → 15d |  | none → 149d | none → 18 |
| 22 | Design donation portal for potential investors | 2023-02-06 → 2023-06-06 (+120d) | 2023-02-06 → 2023-06-30 (+144d) | 1d → 19d |  | none → 0d | none → 18 |
| 23 | Design a submission page for new ideas on products/services | 2023-02-06 → 2023-06-06 (+120d) | 2023-02-06 → 2023-06-22 (+136d) | 1d → 13d |  | none → 6d | none → 18 |
| 24 | Design registration for organizations to develop custom websites | 2023-02-06 → 2023-06-06 (+120d) | 2023-02-06 → 2023-06-21 (+135d) | 1d → 12d |  | none → 7d | none → 18 |
| 25 | Design tracking system | 2023-02-06 → 2023-06-06 (+120d) | 2023-02-06 → 2023-06-16 (+130d) | 1d → 9d |  | none → 16d | none → 18 |
| 26 | Design incentive system | 2023-02-06 → 2023-06-06 (+120d) | 2023-02-06 → 2023-06-26 (+140d) | 1d → 15d |  | none → 10d | none → 18 |
| 27 | **Web Site Development** | 2023-02-06 → 2023-06-19 (+133d) | 2023-02-06 → 2023-09-20 (+226d) | 1d → 68d |  | 0d → 10d |  |
| 28 | Develop donation portal for potential investors | 2023-02-06 → 2023-07-03 (+147d) | 2023-02-06 → 2023-08-01 (+176d) | 1d → 22d |  | none → 0d | none → 22 |
| 29 | Develop a submission page for new ideas on products/services | 2023-02-06 → 2023-06-23 (+137d) | 2023-02-06 → 2023-07-24 (+168d) | 1d → 22d |  | none → 6d | none → 23 |
| 30 | Develop a registration page for organizations to develop custom websites | 2023-02-06 → 2023-06-22 (+136d) | 2023-02-06 → 2023-07-21 (+165d) | 1d → 22d |  | none → 7d | none → 24 |
| 31 | Develop tracking system | 2023-02-06 → 2023-06-19 (+133d) | 2023-02-06 → 2023-07-10 (+154d) | 1d → 16d |  | none → 16d | none → 25 |
| 32 | Develop incentive system | 2023-02-06 → 2023-06-27 (+141d) | 2023-02-06 → 2023-07-18 (+162d) | 1d → 16d |  | none → 10d | none → 26 |
| 33 | Upload templates and guidelines | 2023-02-06 → 2023-06-27 (+141d) | 2023-02-06 → 2023-06-30 (+144d) | 1d → 4d |  | none → 149d | none → 21, 23 |
| 34 | Conduct Verification Testing | 2023-02-06 → 2023-08-02 (+177d) | 2023-02-06 → 2023-08-25 (+200d) | 1d → 18d |  | none → 0d | none → 28, 29, 30, 31, 32 |
| 35 | Conduct Validation Testing | 2023-02-06 → 2023-08-28 (+203d) | 2023-02-06 → 2023-09-14 (+220d) | 1d → 14d |  | none → 0d | none → 34 |
| 36 | Conduct Pilot Testing | 2023-02-06 → 2023-09-15 (+221d) | 2023-02-06 → 2023-09-20 (+226d) | 1d → 4d |  | none → 0d | none → 35 |
| 37 | **Roll Out** | 2023-02-06 → 2023-09-21 (+227d) | 2023-02-06 → 2024-01-02 (+330d) | 1d → 74d |  |  |  |
| 38 | Hold Four Events (in different countries) to Test Site Functionality | 2023-02-06 → 2023-09-21 (+227d) | 2023-02-06 → 2023-11-21 (+288d) | 1d → 44d |  | none → 0d | none → 36 |
| 39 | Obtain Feedback | 2023-02-06 → 2023-11-22 (+289d) | 2023-02-06 → 2023-11-24 (+291d) | 1d → 3d |  | none → 0d | none → 38 |
| 40 | Implement Changes | 2023-02-06 → 2023-11-27 (+294d) | 2023-02-06 → 2023-12-12 (+309d) | 1d → 12d |  | none → 0d | none → 39 |
| 41 | Move site to production server | 2023-02-06 → 2023-12-13 (+310d) | 2023-02-06 → 2023-12-18 (+315d) | 1d → 4d |  | none → 0d | none → 40 |
| 42 | Determine roll out schedule | 2023-02-06 → 2023-12-19 (+316d) | 2023-02-06 → 2023-12-26 (+323d) | 1d → 6d |  | none → 0d | none → 40, 41 |
| 43 | Communicate roll out plan to users | 2023-02-06 → 2023-12-27 (+324d) | 2023-02-06 → 2024-01-01 (+329d) | 1d → 4d |  | none → 0d | none → 42 |
| 44 | Conduct user training | 2023-02-06 → 2023-09-21 (+227d) | 2023-02-06 → 2023-09-27 (+233d) | 1d → 5d |  | none → 69d | none → 36 |
| 45 | Deploy system | 2023-02-06 → 2024-01-02 (+330d) | 2023-02-06 → 2024-01-02 (+330d) |  |  | none → 0d | none → 43 |
| 46 | **Support** | 2023-02-06 A → 2024-01-03 (+331d) | 2023-02-06 → 2024-01-16 (+344d) | 1d → 10d | 15% → 0% | none → 0d |  |
| 47 | Determine what support resources are needed | 2023-02-06 A → 2024-01-03 (+331d) | 2023-02-06 → 2024-01-05 (+333d) | 1d → 3d | 25% → 0% | none → 0d | none → 44, 45 |
| 48 | Make appropriate staffing changes | 2023-02-06 → 2024-01-08 (+336d) | 2023-02-06 → 2024-01-10 (+338d) | 1d → 3d |  | none → 3d | none → 47 |
| 49 | Determine method that users will attain support | 2023-02-06 A → 2024-01-08 (+336d) | 2023-02-06 → 2024-01-10 (+338d) | 1d → 3d | 25% → 0% | none → 3d | none → 47 |
| 50 | Determine support process | 2023-02-06 A → 2024-01-08 (+336d) | 2023-02-06 → 2024-01-15 (+343d) | 1d → 6d | 25% → 0% | none → 0d | none → 47 |
| 51 | Launch support | 2023-02-06 → 2024-01-16 (+344d) | 2023-02-06 → 2024-01-16 (+344d) |  |  | none → 0d | none → 48, 49, 50 |
| 52 | **Controlling** | 2023-02-06 A → 2024-01-17 (+345d) | 2023-02-06 → 2024-01-17 (+345d) |  | 25% → 0% |  |  |
| 53 | Hold formal customer review | 2023-02-06 A → 2024-01-17 (+345d) | 2023-02-06 → 2024-01-17 (+345d) |  | 25% → 0% | none → 0d | none → 51 |
| 54 | **Closing** | 2023-02-06 → 2024-01-18 (+346d) | 2023-02-06 → 2024-01-25 (+353d) | 1d → 6d |  |  |  |
| 55 | Prepare final report and presentation | 2023-02-06 → 2024-01-18 (+346d) | 2023-02-06 → 2024-01-24 (+352d) | 1d → 5d |  | none → 0d | none → 53 |

## Version 4 (saved 2023-04-03, file Global Treps Project Rev 3.mpp)

Last finish stays 2024-01-25.

Changed:

| ID | Task | Other |
| --- | --- | --- |
| 2 | Finalize project team | resources none → Project Manager |
| 3 | Develop project charter | resources none → Project Manager |
| 5 | Develop scope statement | resources none → Project Manager |
| 6 | Develop and refine other plans | resources none → Project Manager |
| 9 | Conduct research for income mechanism into Global Treps | resources none → Support Team Manager |
| 10 | Evaluate current systems | resources none → Support Team Manager; System Test Engineer |
| 11 | Define requirements | resources none → Website Developer |
| 12 | Define user requirements | resources none → Website Developer |
| 13 | Define content requirements | resources none → Website Developer |
| 14 | Define system requirements | resources none → Website Developer |
| 15 | Define server owner requirements | resources none → Website Developer |
| 16 | Define specific functionality | resources none → Support Team Manager; System Test Engineer |
| 17 | Define risks and risk management approach | resources none → Project Manager; Website Developer |
| 18 | Develop project plan | resources none → Project Manager |
| 19 | Brief web development team | resources none → Project Manager |
| 21 | Create templates and guidelines for running events | resources none → Support Team Manager; System Test Engineer |
| 22 | Design donation portal for potential investors | resources none → Website Developer |
| 23 | Design a submission page for new ideas on products/services | resources none → Website Developer |
| 24 | Design registration for organizations to develop custom websites | resources none → Website Developer |
| 25 | Design tracking system | resources none → Website Developer |
| 26 | Design incentive system | resources none → Website Developer |
| 28 | Develop donation portal for potential investors | resources none → Website Developer |
| 29 | Develop a submission page for new ideas on products/services | resources none → Website Developer |
| 30 | Develop a registration page for organizations to develop custom websites | resources none → Website Developer |
| 31 | Develop tracking system | resources none → Website Developer |
| 32 | Develop incentive system | resources none → Website Developer |
| 33 | Upload templates and guidelines | resources none → Support Team Manager |
| 34 | Conduct Verification Testing | resources none → System Test Engineer |
| 35 | Conduct Validation Testing | resources none → System Test Engineer |
| 36 | Conduct Pilot Testing | resources none → Support Team Manager; System Test Engineer |
| 38 | Hold Four Events (in different countries) to Test Site Functionality | resources none → Event Runner: Ethopia; Support Team Manager; System Test Engineer |
| 39 | Obtain Feedback | resources none → Project Manager |
| 40 | Implement Changes | resources none → Website Developer |
| 41 | Move site to production server | resources none → System Test Engineer |
| 42 | Determine roll out schedule | resources none → Project Manager |
| 43 | Communicate roll out plan to users | resources none → Project Manager |
| 44 | Conduct user training | resources none → System Test Engineer |
| 45 | Deploy system | resources none → System Test Engineer |
| 47 | Determine what support resources are needed | resources none → Support Team Manager; System Test Engineer |
| 48 | Make appropriate staffing changes | resources none → Project Manager |
| 49 | Determine method that users will attain support | resources none → Event Runner: Ethopia; Project Manager; Support Team Manager; System Test Engineer; Website Developer |
| 50 | Determine support process | resources none → Event Runner: Ethopia; Support Team Manager; System Test Engineer |
| 51 | Launch support | resources none → Event Runner: Ethopia; Support Team Manager; System Test Engineer; Website Developer |
| 53 | Hold formal customer review | resources none → Project Manager |
| 55 | Prepare final report and presentation | resources none → Project Manager |
| 56 | Deliver final report and presentation | resources none → Project Manager |

## Version 5 (data date 2023-04-17, saved 2023-04-18, file Global Treps Project Rev 5.mpp)

Last finish 2024-01-25 → 2024-02-01 (+7d). Complete tasks 0 → 15.

Changed:

| ID | Task | Start | Finish | Duration | Complete | Total float | Other |
| --- | --- | --- | --- | --- | --- | --- | --- |
| 1 | **Initiating** | 2023-01-25 A | 2023-02-07 A |  | 0% → 100% | 0d → none | resources none → Project Manager; baseline start none → 2023-01-25; baseline finish none → 2023-02-07 |
| 2 | Finalize project team | 2023-01-25 A | 2023-01-31 A |  | 0% → 100% | 0d → none | baseline start none → 2023-01-25; baseline finish none → 2023-01-31 |
| 3 | Develop project charter | 2023-02-01 A | 2023-02-07 A |  | 0% → 100% | 0d → none | baseline start none → 2023-02-01; baseline finish none → 2023-02-07 |
| 4 | **Planning** | 2023-02-08 A | 2023-03-17 A |  | 0% → 100% | 0d → none | baseline start none → 2023-02-08; baseline finish none → 2023-03-17 |
| 5 | Develop scope statement | 2023-02-08 A | 2023-02-17 A |  | 0% → 100% | 0d → none | baseline start none → 2023-02-08; baseline finish none → 2023-02-17 |
| 6 | Develop and refine other plans | 2023-02-20 A | 2023-03-17 A |  | 0% → 100% | 37d → none | baseline start none → 2023-02-20; baseline finish none → 2023-03-17 |
| 7 | **Executing** | 2023-02-20 A | 2024-01-16 → 2024-01-23 (+7d) | 237d → 242d | 0% → 38% | 0d → 7d | baseline start none → 2023-02-20; baseline finish none → 2024-01-23 |
| 8 | **Concept** | 2023-02-20 A | 2023-06-06 → 2023-06-12 A (+6d) | 77d → 81d | 0% → 100% | 0d → none | baseline start none → 2023-02-20; baseline finish none → 2023-06-12 |
| 9 | Conduct research for income mechanism into Global Treps | 2023-02-20 A | 2023-03-17 → 2023-03-20 A (+3d) | 20d → 21d | 0% → 100% | 224d → none | baseline start none → 2023-02-20; baseline finish none → 2023-03-20 |
| 10 | Evaluate current systems | 2023-02-20 → 2023-04-13 A (+52d) | 2023-02-24 → 2023-04-24 A (+59d) | 5d → 8d | 0% → 100% | 0d → none | baseline start none → 2023-04-13; baseline finish none → 2023-04-24 |
| 11 | Define requirements | 2023-02-27 A | 2023-03-17 → 2023-03-21 A (+4d) | 15d → 17d | 0% → 100% | 0d → none | baseline start none → 2023-02-27; baseline finish none → 2023-03-21 |
| 12 | Define user requirements | 2023-03-20 A | 2023-04-04 → 2023-04-12 A (+8d) | 12d → 18d | 0% → 100% | 4d → none | baseline start none → 2023-03-20; baseline finish none → 2023-04-12 |
| 13 | Define content requirements | 2023-03-20 A | 2023-04-10 → 2023-04-18 A (+8d) | 16d → 22d | 0% → 100% | 0d → none | baseline start none → 2023-03-20; baseline finish none → 2023-04-18 |
| 14 | Define system requirements | 2023-04-11 A | 2023-05-04 → 2023-05-15 A (+11d) | 18d → 25d | 0% → 100% | 173d → none | baseline start none → 2023-04-11; baseline finish none → 2023-05-15 |
| 15 | Define server owner requirements | 2023-05-05 A | 2023-05-26 → 2023-05-25 A (-1d) | 16d → 15d | 0% → 100% | 173d → none | baseline start none → 2023-05-05; baseline finish none → 2023-05-25 |
| 16 | Define specific functionality | 2023-04-11 A | 2023-05-09 → 2023-05-15 A (+6d) | 21d → 25d | 0% → 100% | 0d → none | baseline start none → 2023-04-11; baseline finish none → 2023-05-15 |
| 17 | Define risks and risk management approach | 2023-02-27 A | 2023-03-15 → 2023-03-20 A (+5d) | 13d → 16d | 0% → 100% | 39d → none | baseline start none → 2023-02-27; baseline finish none → 2023-03-20 |
| 18 | Develop project plan | 2023-05-10 A | 2023-06-05 → 2023-06-12 A (+7d) | 19d → 24d | 0% → 100% | 0d → none | baseline start none → 2023-05-10; baseline finish none → 2023-06-12 |
| 19 | Brief web development team | 2023-06-06 A | 2023-06-06 → 2023-06-08 A (+2d) | 1d → 3d | 0% → 100% | 167d → none | baseline start none → 2023-06-06; baseline finish none → 2023-06-08 |
| 20 | **Web Site Design** | 2023-06-06 → 2023-06-13 (+7d) | 2023-06-30 → 2023-07-07 (+7d) |  |  |  | baseline start none → 2023-06-13; baseline finish none → 2023-07-07 |
| 21 | Create templates and guidelines for running events | 2023-06-06 → 2023-06-13 (+7d) | 2023-06-26 → 2023-07-03 (+7d) |  |  |  | baseline start none → 2023-06-13; baseline finish none → 2023-07-03 |
| 22 | Design donation portal for potential investors | 2023-06-06 → 2023-06-13 (+7d) | 2023-06-30 → 2023-07-07 (+7d) |  |  |  | baseline start none → 2023-06-13; baseline finish none → 2023-07-07 |
| 23 | Design a submission page for new ideas on products/services | 2023-06-06 → 2023-06-13 (+7d) | 2023-06-22 → 2023-06-29 (+7d) |  |  |  | baseline start none → 2023-06-13; baseline finish none → 2023-06-29 |
| 24 | Design registration for organizations to develop custom websites | 2023-06-06 → 2023-06-13 (+7d) | 2023-06-21 → 2023-06-28 (+7d) |  |  |  | baseline start none → 2023-06-13; baseline finish none → 2023-06-28 |
| 25 | Design tracking system | 2023-06-06 → 2023-06-13 (+7d) | 2023-06-16 → 2023-06-23 (+7d) |  |  |  | baseline start none → 2023-06-13; baseline finish none → 2023-06-23 |
| 26 | Design incentive system | 2023-06-06 → 2023-06-13 (+7d) | 2023-06-26 → 2023-07-03 (+7d) |  |  |  | baseline start none → 2023-06-13; baseline finish none → 2023-07-03 |
| 27 | **Web Site Development** | 2023-06-19 → 2023-06-26 (+7d) | 2023-09-20 → 2023-09-27 (+7d) |  |  |  | baseline start none → 2023-06-26; baseline finish none → 2023-09-27 |
| 28 | Develop donation portal for potential investors | 2023-07-03 → 2023-07-10 (+7d) | 2023-08-01 → 2023-08-08 (+7d) |  |  |  | baseline start none → 2023-07-10; baseline finish none → 2023-08-08 |
| 29 | Develop a submission page for new ideas on products/services | 2023-06-23 → 2023-06-30 (+7d) | 2023-07-24 → 2023-07-31 (+7d) |  |  |  | baseline start none → 2023-06-30; baseline finish none → 2023-07-31 |
| 30 | Develop a registration page for organizations to develop custom websites | 2023-06-22 → 2023-06-29 (+7d) | 2023-07-21 → 2023-07-28 (+7d) |  |  |  | baseline start none → 2023-06-29; baseline finish none → 2023-07-28 |
| 31 | Develop tracking system | 2023-06-19 → 2023-06-26 (+7d) | 2023-07-10 → 2023-07-17 (+7d) |  |  |  | baseline start none → 2023-06-26; baseline finish none → 2023-07-17 |
| 32 | Develop incentive system | 2023-06-27 → 2023-07-04 (+7d) | 2023-07-18 → 2023-07-25 (+7d) |  |  |  | baseline start none → 2023-07-04; baseline finish none → 2023-07-25 |
| 33 | Upload templates and guidelines | 2023-06-27 → 2023-07-04 (+7d) | 2023-06-30 → 2023-07-07 (+7d) |  |  |  | baseline start none → 2023-07-04; baseline finish none → 2023-07-07 |
| 34 | Conduct Verification Testing | 2023-08-02 → 2023-08-09 (+7d) | 2023-08-25 → 2023-09-01 (+7d) |  |  |  | baseline start none → 2023-08-09; baseline finish none → 2023-09-01 |
| 35 | Conduct Validation Testing | 2023-08-28 → 2023-09-04 (+7d) | 2023-09-14 → 2023-09-21 (+7d) |  |  |  | baseline start none → 2023-09-04; baseline finish none → 2023-09-21 |
| 36 | Conduct Pilot Testing | 2023-09-15 → 2023-09-22 (+7d) | 2023-09-20 → 2023-09-27 (+7d) |  |  |  | baseline start none → 2023-09-22; baseline finish none → 2023-09-27 |
| 37 | **Roll Out** | 2023-09-21 → 2023-09-28 (+7d) | 2024-01-02 → 2024-01-09 (+7d) |  |  |  | baseline start none → 2023-09-28; baseline finish none → 2024-01-09 |
| 38 | Hold Four Events (in different countries) to Test Site Functionality | 2023-09-21 → 2023-09-28 (+7d) | 2023-11-21 → 2023-11-28 (+7d) |  |  |  | baseline start none → 2023-09-28; baseline finish none → 2023-11-28 |
| 39 | Obtain Feedback | 2023-11-22 → 2023-11-29 (+7d) | 2023-11-24 → 2023-12-01 (+7d) |  |  |  | baseline start none → 2023-11-29; baseline finish none → 2023-12-01 |
| 40 | Implement Changes | 2023-11-27 → 2023-12-04 (+7d) | 2023-12-12 → 2023-12-19 (+7d) |  |  |  | baseline start none → 2023-12-04; baseline finish none → 2023-12-19 |
| 41 | Move site to production server | 2023-12-13 → 2023-12-20 (+7d) | 2023-12-18 → 2023-12-25 (+7d) |  |  |  | baseline start none → 2023-12-20; baseline finish none → 2023-12-25 |
| 42 | Determine roll out schedule | 2023-12-19 → 2023-12-26 (+7d) | 2023-12-26 → 2024-01-02 (+7d) |  |  |  | baseline start none → 2023-12-26; baseline finish none → 2024-01-02 |
| 43 | Communicate roll out plan to users | 2023-12-27 → 2024-01-03 (+7d) | 2024-01-01 → 2024-01-08 (+7d) |  |  |  | baseline start none → 2024-01-03; baseline finish none → 2024-01-08 |
| 44 | Conduct user training | 2023-09-21 → 2023-09-28 (+7d) | 2023-09-27 → 2023-10-04 (+7d) |  |  |  | baseline start none → 2023-09-28; baseline finish none → 2023-10-04 |
| 45 | Deploy system | 2024-01-02 → 2024-01-09 (+7d) | 2024-01-02 → 2024-01-09 (+7d) |  |  |  | baseline start none → 2024-01-09; baseline finish none → 2024-01-09 |
| 46 | **Support** | 2024-01-03 → 2024-01-10 (+7d) | 2024-01-16 → 2024-01-23 (+7d) |  |  |  | baseline start none → 2024-01-10; baseline finish none → 2024-01-23 |
| 47 | Determine what support resources are needed | 2024-01-03 → 2024-01-10 (+7d) | 2024-01-05 → 2024-01-12 (+7d) |  |  |  | baseline start none → 2024-01-10; baseline finish none → 2024-01-12 |
| 48 | Make appropriate staffing changes | 2024-01-08 → 2024-01-15 (+7d) | 2024-01-10 → 2024-01-17 (+7d) |  |  |  | baseline start none → 2024-01-15; baseline finish none → 2024-01-17 |
| 49 | Determine method that users will attain support | 2024-01-08 → 2024-01-15 (+7d) | 2024-01-10 → 2024-01-17 (+7d) |  |  |  | baseline start none → 2024-01-15; baseline finish none → 2024-01-17 |
| 50 | Determine support process | 2024-01-08 → 2024-01-15 (+7d) | 2024-01-15 → 2024-01-22 (+7d) |  |  |  | baseline start none → 2024-01-15; baseline finish none → 2024-01-22 |
| 51 | Launch support | 2024-01-16 → 2024-01-23 (+7d) | 2024-01-16 → 2024-01-23 (+7d) |  |  |  | baseline start none → 2024-01-23; baseline finish none → 2024-01-23 |
| 52 | **Controlling** | 2024-01-17 → 2024-01-24 (+7d) | 2024-01-17 → 2024-01-24 (+7d) |  |  |  | baseline start none → 2024-01-24; baseline finish none → 2024-01-24 |
| 53 | Hold formal customer review | 2024-01-17 → 2024-01-24 (+7d) | 2024-01-17 → 2024-01-24 (+7d) |  |  |  | baseline start none → 2024-01-24; baseline finish none → 2024-01-24 |
| 54 | **Closing** | 2024-01-18 → 2024-01-25 (+7d) | 2024-01-25 → 2024-02-01 (+7d) |  |  |  | baseline start none → 2024-01-25; baseline finish none → 2024-02-01 |
| 55 | Prepare final report and presentation | 2024-01-18 → 2024-01-25 (+7d) | 2024-01-24 → 2024-01-31 (+7d) |  |  |  | baseline start none → 2024-01-25; baseline finish none → 2024-01-31 |
| 56 | Deliver final report and presentation | 2024-01-25 → 2024-02-01 (+7d) | 2024-01-25 → 2024-02-01 (+7d) |  |  |  | baseline start none → 2024-02-01; baseline finish none → 2024-02-01 |
